# ПП-6С-ЛР4

Schedule from MS Project, 2024-02-12 to 2024-03-19, status date 2024-04-05, costs in р., A marks actual dates.
Microsoft

## Calendars

- Стандартный: Mon-Fri 09:00-13:00, 14:00-18:00; Sat-Sun off. Exceptions (off unless hours are given): 2024-02-23 (23 Фераля), 2024-03-08 (8 Марта).

## Resources

| Resource | Unit | Rate | Cost per use |
| --- | --- | --- | --- |
| Руководитель |  | 350 |  |
| Пенопласт | м^3. | 2550 | 2550 |
| Шпатлёвка | кг. | 1000 | 1000 |
| Воск | кг. | 1000 | 1000 |
| Гелькоут | кг. | 1500 | 1500 |
| Стекловолокно | м^3. | 500 | 500 |
| Полеэфирная смола | кг. | 100 | 100 |
| Профильный металл (40x20x2) | кг. | 100 | 100 |
| Сервоприводы | шт. | 20000 | 20000 |
| Фонарь кабины пилота | шт. | 100000 | 100000 |
| Кокпит | шт. | 500000 | 500000 |
| ЧПУ станок | шт. | 300000 | 300000 |
| Болгарка | шт. | 5000 | 5000 |
| Шлифовальная машинка | шт. | 3000 | 3000 |
| Маятниковая пила | шт. | 35000 | 35000 |
| Шуруповёрт | шт. | 3000 | 3000 |
| Набор бит и головок | шт. | 4000 | 4000 |
| Отрезные диски | шт. | 300 | 300 |
| Образивный материал | мм. | 300 | 300 |
| Валик | шт. | 250 | 250 |
| Кисточка | шт. | 150 | 150 |
| Полуавтомат сварочный | шт. | 25000 | 25000 |
| Краскопульт | шт. | 10000 | 10000 |
| Краска авиационная | л. | 7000 | 7000 |
| Рабочие по созданию матрицы |  | 120 |  |
| Рабочие по обработке металла |  | 200 |  |
| Рабочие по лакокрасочным работам |  | 120 |  |
| Рабочие по сборке |  | 90 |  |
| Рабочие по созданию деталей из композитным материалов |  | 120 |  |

## Schedule

| ID | WBS | Task | Duration | Start | Finish | Predecessors | Complete | Total slack | Free slack | Constraint | Resources | Work | Actual work | Cost | Actual cost |
| --- | --- | --- | --- | --- | --- | --- | --- | --- | --- | --- | --- | --- | --- | --- | --- |
| 1 | 1 | **Создание матрицы планера** | 7.75d | 2024-02-12 A | 2024-02-21 A |  | 100% |  |  |  |  | 56h | 56h | 621,980 | 621,980 |
| 2 | 1.1 | Создание черновой планера из пенопласта на ЧПУ станке | 0.75d | 2024-02-12 A | 2024-02-12 A |  | 100% |  |  | start no earlier than 2024-02-12 | Пенопласт [1 м^3.]; ЧПУ станок [1 шт.]; Рабочие по созданию матрицы | 8h | 8h | 606,000 | 606,000 |
| 3 | 1.2 | Обработка черновой матрицы путём обработки образивом и шпатлеванием | 1.75d | 2024-02-13 A | 2024-02-15 A | 2 | 100% |  |  | finish no earlier than 2024-02-15 | Шпатлёвка [1 кг.]; Образивный материал [1 мм.]; Рабочие по созданию матрицы | 16h | 16h | 4,460 | 4,460 |
| 4 | 1.3 | Покрытие чистовой матрицы воском и гелькоутом | 1.75d | 2024-02-16 A | 2024-02-19 A | 3 | 100% |  |  | start no earlier than 2024-02-16 | Воск [1 кг.]; Гелькоут [1 кг.]; Валик [1 шт.]; Кисточка [1 шт.]; Рабочие по созданию матрицы | 16h | 16h | 7,660 | 7,660 |
| 5 | 1.4 | Нанесение стекловолкна на чистовую матрицу с использованием полиэфирной смолы | 1.75d | 2024-02-20 A | 2024-02-21 A | 4 | 100% |  |  | start no earlier than 2024-02-20 | Полеэфирная смола [1 кг.]; Стекловолокно [1 м^3.]; Валик [1 шт.]; Кисточка [1 шт.]; Рабочие по созданию матрицы | 16h | 16h | 3,860 | 3,860 |
| 6 | 2 | **Создание деталей планера из композитных материалов** | 4.75d | 2024-02-26 | 2024-03-01 |  |  | 1.62d |  |  |  | 32h |  | 16,320 |  |
| 7 | 2.1 | Нанесение стекловокна на готовую матрицу с использованием полиэфирной смолы | 1.75d | 2024-02-26 | 2024-02-27 | 5 |  | 2.88d | 1.25d | finish no earlier than 2024-02-27 | Воск [1 кг.]; Полеэфирная смола [1 кг.]; Стекловолокно [1 м^3.]; Валик [1 шт.]; Кисточка [1 шт.]; Рабочие по созданию деталей из композитным материалов | 16h |  | 5,860 |  |
| 8 | 2.2 | Снятие готовой детали с матрицы и её обработка | 1.75d | 2024-02-29 | 2024-03-01 | 7 |  | 1.62d | 0.12d | finish no earlier than 2024-03-01 | Шпатлёвка [1 кг.]; Образивный материал [1 мм.]; Шлифовальная машинка [1 шт.]; Рабочие по созданию деталей из композитным материалов | 16h |  | 10,460 |  |
| 9 | 3 | **Создание силовых конструкций планера** | 5d | 2024-02-12 A | 2024-02-16 A |  | 100% |  |  |  |  | 40h | 40h | 139,100 | 139,100 |
| 10 | 3.1 | Вырезание профильного металла | 1.75d | 2024-02-12 A | 2024-02-13 A |  | 100% |  |  | start no earlier than 2024-02-12 | Профильный металл (40x20x2) [1 кг.]; Маятниковая пила [1 шт.]; Отрезные диски [1 шт.]; Рабочие по обработке металла | 16h | 16h | 73,900 | 73,900 |
| 11 | 3.2 | Обработка вырезанных деталей | 1.75d | 2024-02-14 A | 2024-02-15 A | 10 | 100% |  |  |  | Болгарка [1 шт.]; Отрезные диски [1 шт.]; Рабочие по обработке металла | 16h | 16h | 13,700 | 13,700 |
| 12 | 3.3 | Сваривание деталей в единую конструкцию | 0.75d | 2024-02-16 A | 2024-02-16 A | 11 | 100% |  |  | finish no earlier than 2024-02-15 | Полуавтомат сварочный [1 шт.]; Рабочие по обработке металла | 8h | 8h | 51,500 | 51,500 |
| 13 | 4 | **Сборка планера** | 3.5d | 2024-03-04 | 2024-03-07 |  |  | 1.5d |  |  |  | 32h |  | 1,270,790 |  |
| 14 | 4.1 | Установка силовых конструкций в детали планера | 1.75d | 2024-03-04 | 2024-03-05 | 12, 8 |  | 1.5d | 0d | start no earlier than 2024-03-02 | Набор бит и головок [1 шт.]; Шуруповёрт [1 шт.]; Рабочие по сборке | 16h |  | 15,395 |  |
| 15 | 4.2 | Установка кокпита, фонаря кабины пилота, электроники и сервоприводов | 1.75d | 2024-03-05 | 2024-03-07 | 14 |  | 1.5d | 0d | start no earlier than 2024-03-05 | Кокпит [1 шт.]; Сервоприводы [1 шт.]; Фонарь кабины пилота [1 шт.]; Набор бит и головок [1 шт.]; Шуруповёрт [1 шт.]; Рабочие по сборке | 16h |  | 1,255,395 |  |
| 16 | 5 | **Лакокрасочные работы** | 7d | 2024-03-11 | 2024-03-19 |  |  |  |  |  |  | 48h |  | 107,760 |  |
| 17 | 5.1 | Грунтование планера | 2d | 2024-03-07 | 2024-03-12 | 15 |  | 1.5d | 0d | start no earlier than 2024-03-06 | Краска авиационная [1 л.]; Краскопульт [1 шт.]; Рабочие по лакокрасочным работам | 16h |  | 35,920 |  |
| 18 | 5.2 | Покарска планера | 2d | 2024-03-12 | 2024-03-14 | 17 |  | 1.5d | 0.38d |  | Краска авиационная [1 л.]; Краскопульт [1 шт.]; Рабочие по лакокрасочным работам | 16h |  | 35,920 |  |
| 19 | 5.3 | Лакировка планера | 2d | 2024-03-14 | 2024-03-18 | 18 |  | 1.12d |  | finish no earlier than 2024-03-18 | Краска авиационная [1 л.]; Краскопульт [1 шт.]; Рабочие по лакокрасочным работам | 16h |  | 35,920 |  |
